# Library

How a schedule from MS Project changed from version to version. A marks actual dates.

## Version 1 (saved 2022-11-09, file Lab2-Q3-Library.mpp)

Note of the change: Add project's document

| ID | WBS | Task | Duration | Start | Finish | Predecessors | Total float | Constraint |
| --- | --- | --- | --- | --- | --- | --- | --- | --- |
| 1 | 1 | **Diagnose the old system:** | 4d | 2022-09-28 | 2022-10-03 |  | 6d |  |
| 2 |  | Perform surveying on regular readers at the library | 2d | 2022-09-28 | 2022-09-29 |  | 6d |  |
| 3 |  | Analyze surveys and look into the problem | 1d | 2022-09-30 | 2022-09-30 | 2 | 6d |  |
| 4 |  | Investigate employees (librarian, IT specialist, head of library) | 2d | 2022-09-29 | 2022-09-30 |  | 6d | start no earlier than 2022-09-29 |
| 5 |  | Measure the performance of the old servers | 2d | 2022-09-28 | 2022-09-29 |  | 7d |  |
| 6 |  | Meeting with Head of Library to report the old system | 1d | 2022-10-03 | 2022-10-03 | 4, 2, 3, 5 | 6d |  |
| 7 | 2 | **Come up with possible solutions (listing out requirements):** | 7d | 2022-10-04 | 2022-10-12 | 1 | 4d |  |
| 8 |  | Scale up the system (storage for physical books, …) | 4d | 2022-10-04 | 2022-10-07 |  | 6d |  |
| 9 | 2.2 | **Come up with new functionalities to benefit the actors:** | 1.5d | 2022-10-10 | 2022-10-11 |  | 4.5d |  |
| 10 |  | E-books (rental and trial mode) | 1.5d | 2022-10-10 | 2022-10-11 |  | 4.5d | start no earlier than 2022-10-08 |
| 11 |  | Auto generating reports | 1.5d | 2022-10-10 | 2022-10-11 |  | 4.5d | start no earlier than 2022-10-10 |
| 12 |  | Auto tracking progress | 1.5d | 2022-10-10 | 2022-10-11 |  | 4.5d | start no earlier than 2022-10-09 |
| 13 |  | Meeting: Suggest new features to Client | 1d | 2022-10-12 | 2022-10-12 | 8, 9 | 4d | start no earlier than 2022-10-12 |
| 14 | 3 | **Design the system:** | 8d | 2022-10-13 | 2022-10-21 | 7 | 3d |  |
| 15 | 3.1 | **Design diagrams:** | 2d | 2022-10-13 | 2022-10-14 |  | 3d |  |
| 16 |  | Use-case diagram | 1d | 2022-10-13 | 2022-10-13 |  | 4d |  |
| 17 |  | Low-level sequence diagram | 1d | 2022-10-13 | 2022-10-13 |  | 4d | start no earlier than 2022-10-13 |
| 18 |  | High-level sequence diagram | 1d | 2022-10-13 | 2022-10-13 |  | 4d |  |
| 19 |  | Class diagram | 1d | 2022-10-14 | 2022-10-14 |  | 3d | start no earlier than 2022-10-14 |
| 20 |  | Deployment diagram | 1d | 2022-10-14 | 2022-10-14 |  | 3d | start no earlier than 2022-10-14 |
| 21 | 3.2 | **Design user interface/ user experience** | 6d | 2022-10-15 | 2022-10-21 | 15 | 3d |  |
| 22 |  | Try to extend the old interface’s structure by adding more pages (i.e: ebook rental page for readers, progress-tracking page for Head of Library, …) | 2d | 2022-10-15 | 2022-10-17 |  | 3d | start no earlier than 2022-10-15 |
| 23 |  | If unable to do so, come up with a new wireframe | 3d | 2022-10-18 | 2022-10-20 | 22 | 3d |  |
| 24 |  | Meeting: Update the mockup to Client. | 1d | 2022-10-21 | 2022-10-21 | 23 | 3d |  |
| 25 | 3.3 | **Design the server:** | 4d | 2022-10-15 | 2022-10-19 | 15 | 5d |  |
| 26 |  | Extend the old storage | 1.5d | 2022-10-15 | 2022-10-17 |  | 5d |  |
| 27 |  | Design new databases for library’s Ebook system | 2.5d | 2022-10-17 | 2022-10-19 | 26 | 5d |  |
| 28 | 3.4 | **Design the infrastructure:** | 6d | 2022-10-15 | 2022-10-21 | 15 | 3d |  |
| 29 |  | Renew the old one (faster network, better PCs, …) | 3d | 2022-10-15 | 2022-10-18 |  | 3d |  |
| 30 |  | Decide which components of the system to move into cloud system for scalability and better load handling | 2d | 2022-10-19 | 2022-10-20 | 29 | 3d |  |
| 31 |  | Meeting: Suggest improvements for infrastructure to Client. | 1d | 2022-10-21 | 2022-10-21 | 30 | 3d |  |
| 32 | 4 | **Implementation:** | 16d | 2022-10-24 | 2022-11-14 | 14 | 0d |  |
| 33 | 4.1 | **Front-end:** | 16d | 2022-10-24 | 2022-11-14 |  | 0d |  |
| 34 | 4.1.1 | **Implement UI:** | 4d | 2022-10-24 | 2022-10-27 |  | 3d |  |
| 35 | 4.1.1.1 | **E-book** | 2d | 2022-10-24 | 2022-10-25 |  | 5d |  |
| 36 |  | E-book list page | 2d | 2022-10-24 | 2022-10-25 |  | 5d |  |
| 37 |  | E-book detail page | 2d | 2022-10-24 | 2022-10-25 |  | 5d |  |
| 38 |  | Reading ebook UI | 2d | 2022-10-24 | 2022-10-25 |  | 5d |  |
| 39 |  | Request / Approve e-book rental dialog | 2d | 2022-10-24 | 2022-10-25 |  | 5d |  |
| 40 | 4.1.1.2 | **Management system** | 2d | 2022-10-26 | 2022-10-27 |  | 3d |  |
| 41 |  | Auto-generated Report page | 2d | 2022-10-26 | 2022-10-27 |  | 3d | start no earlier than 2022-10-26 |
| 42 |  | Work progress insights | 2d | 2022-10-26 | 2022-10-27 |  | 3d | start no earlier than 2022-10-26 |
| 43 |  | Routing URL | 3d | 2022-10-28 | 2022-11-01 | 34 | 3d |  |
| 44 |  | Integrate APIs from Back-end | 5d | 2022-11-07 | 2022-11-11 | 43, 58 | 0d |  |
| 45 | 4.1.4 | **Testing** | 1d | 2022-11-14 | 2022-11-14 | 34, 43, 44 | 0d |  |
| 46 |  | Snapshot test | 1d | 2022-11-14 | 2022-11-14 |  | 0d |  |
| 47 |  | Unit test | 1d | 2022-11-14 | 2022-11-14 |  | 0d | start no earlier than 2022-11-04 |
| 48 |  | End to end test | 1d | 2022-11-14 | 2022-11-14 |  | 0d | start no earlier than 2022-11-07 |
| 49 |  | Overall Coverage and test report: meeting with QA | 1d | 2022-11-14 | 2022-11-14 |  | 0d | start no earlier than 2022-11-08 |
| 50 | 4.2 | **Back-end:** | 12d | 2022-10-24 | 2022-11-08 |  | 3d |  |
| 51 | 4.2.1 | **Create new databases** | 2d | 2022-10-24 | 2022-10-25 |  | 3d |  |
| 52 |  | A bigger database compared to the old one for migrating old data | 2d | 2022-10-24 | 2022-10-25 |  | 3d |  |
| 53 |  | A database for ebook management system | 2d | 2022-10-24 | 2022-10-25 |  | 3d |  |
| 54 |  | Establish connection with databases (the newly created ones) | 1d | 2022-10-26 | 2022-10-26 | 51 | 3d |  |
| 55 |  | Migrate the old data | 1d | 2022-10-27 | 2022-10-27 | 54 | 3d |  |
| 56 |  | Update the databases’ schemas for new requirements | 1d | 2022-10-27 | 2022-10-27 |  | 4d | start no earlier than 2022-10-27 |
| 57 |  | Integrate old services | 1d | 2022-10-28 | 2022-10-28 | 55 | 3d |  |
| 58 | 4.2.6 | **Create services/endpoint for front-end:** | 5d | 2022-10-31 | 2022-11-04 | 56, 57 | 0d |  |
| 59 | 4.2.6.1 | **E-book:** | 1.5d | 2022-10-31 | 2022-11-01 |  | 3.5d |  |
| 60 |  | List ebooks | 1.5d | 2022-10-31 | 2022-11-01 |  | 3.5d |  |
| 61 |  | View ebook detail | 1.5d | 2022-10-31 | 2022-11-01 |  | 3.5d |  |
| 62 |  | Read ebook in trial mode | 1.5d | 2022-10-31 | 2022-11-01 |  | 3.5d |  |
| 63 |  | Request ebook rental | 1.5d | 2022-10-31 | 2022-11-01 |  | 3.5d |  |
| 64 |  | Approve ebook rental requests | 1.5d | 2022-10-31 | 2022-11-01 |  | 3.5d |  |
| 65 | 4.2.6.2 | **Management system:** | 2d | 2022-11-02 | 2022-11-03 |  | 1d |  |
| 66 |  | List auto-generated reports | 2d | 2022-11-02 | 2022-11-03 |  | 1d | start no earlier than 2022-11-02 |
| 67 |  | View employees’ work progress | 2d | 2022-11-02 | 2022-11-03 |  | 1d | start no earlier than 2022-11-02 |
| 68 | 4.2.6.3 | **Storage:** | 1d | 2022-11-04 | 2022-11-04 |  | 0d |  |
| 69 |  | Request stocking more books | 1d | 2022-11-04 | 2022-11-04 |  | 0d | start no earlier than 2022-11-04 |
| 70 |  | Track book delivery progress | 1d | 2022-11-04 | 2022-11-04 |  | 0d | start no earlier than 2022-11-04 |

| ID | WBS | Task | Duration | Start | Finish | Predecessors | Total float | Constraint |
| --- | --- | --- | --- | --- | --- | --- | --- | --- |
| 71 | 4.2.7 | **Test** | 7d | 2022-10-31 | 2022-11-08 |  | 4d |  |
| 72 |  | Unit test - Structural test | 1d | 2022-11-07 | 2022-11-07 | 58 | 4d |  |
| 73 |  | End-point test - Functional test | 1d | 2022-11-07 | 2022-11-07 | 58 | 4d |  |
| 74 |  | Database Server validation | 1d | 2022-10-31 | 2022-10-31 | 56, 57 | 9d |  |
| 75 |  | Overall Coverage and test report: meeting with QA | 1d | 2022-11-08 | 2022-11-08 | 72, 73, 74 | 4d |  |
| 76 | 5 | **Deployment:** | 4d | 2022-11-15 | 2022-11-18 | 32 | 0d |  |
| 77 |  | Packaging all the code | 3d | 2022-11-15 | 2022-11-17 |  | 0d |  |
| 78 |  | Setting up hosting service | 1d | 2022-11-15 | 2022-11-15 |  | 2d |  |
| 79 |  | Test the connection to the web | 2d | 2022-11-16 | 2022-11-17 |  | 0d | start no earlier than 2022-11-16 |
| 80 |  | Test stability and speed of the web | 2d | 2022-11-16 | 2022-11-17 |  | 0d | start no earlier than 2022-11-16 |
| 81 |  | Meeting with Client to gain feedback for successful release | 1d | 2022-11-18 | 2022-11-18 | 77, 78, 79, 80 | 0d |  |
| 82 | 6 | **Hand over the system to Client (Head of Library)** | 5d | 2022-11-21 | 2022-11-25 | 76 | 0d |  |
| 83 | 6.1 | **Prepare user manual docs** | 1d | 2022-11-21 | 2022-11-21 |  | 0d |  |
| 84 |  | IT department | 1d | 2022-11-21 | 2022-11-21 |  | 0d |  |
| 85 |  | Librarian | 1d | 2022-11-21 | 2022-11-21 |  | 0d |  |
| 86 |  | Head of Library | 1d | 2022-11-21 | 2022-11-21 |  | 0d |  |
| 87 | 6.2 | **Demo and showing reports of the system** | 3d | 2022-11-22 | 2022-11-24 | 83 | 0d |  |
| 88 |  | Organize knowledge sharing sessions for staffs (IT, Librarian, Head of Library, HR) | 1d | 2022-11-22 | 2022-11-22 |  | 0d |  |
| 89 |  | Transfer codebase ownership | 1d | 2022-11-23 | 2022-11-23 | 88 | 0d |  |
| 90 |  | Meeting with Head of Library to announce the final system | 1d | 2022-11-24 | 2022-11-24 | 88, 89 | 0d |  |
| 91 | 6.3 | **Prepare maintenance plan** | 5d | 2022-11-21 | 2022-11-25 |  | 0d |  |
| 92 | 6.3.1 | **System checkup every 3 months** | 1d | 2022-11-25 | 2022-11-25 |  | 0d |  |
| 93 |  | System checkup every 3 months 1 | 1d | 2022-11-25 | 2022-11-25 | 87 |  | start no earlier than 2022-10-01 |
| 94 |  | Planning for recurring training about security for the library system | 1d | 2022-11-21 | 2022-11-21 |  |  |  |

## Version 2 (saved 2022-11-22, file Software Project Management - Library Lab 3 (1).mpp)

Note of the change: Add project's document

Last finish 2022-11-25 → 2022-11-30 (+5d). Complete tasks 0 → 4.

Changed:

| ID | Task | Start | Finish | Duration | Complete | Total float | Predecessors | Other |
| --- | --- | --- | --- | --- | --- | --- | --- | --- |
| 1 | **Diagnose the old system:** |  | 2022-10-03 → 2022-10-05 (+2d) | 4d → 6d |  | 6d → 0d |  |  |
| 2 | Perform surveying on regular readers at the library |  | 2022-09-29 → 2022-09-30 (+1d) | 2d → 2.5d |  | 6d → 2.38d |  | constraint none → start no earlier than 2022-09-28; resources none → Luu Trinh Lam |
| 3 | Analyze surveys and look into the problem | 2022-09-30 → 2022-09-28 (-2d) | 2022-09-30 → 2022-09-28 (-2d) | 1d → 0.12d |  | 6d → none |  | resources none → Nguyen Nhat Anh |
| 4 | Investigate employees (librarian, IT specialist, head of library) | 2022-09-29 → 2022-09-28 (-1d) | 2022-09-30 → 2022-09-29 (-1d) |  |  | 6d → 3d |  | constraint start no earlier than 2022-09-29 → start no earlier than 2022-09-28; resources none → Ta Gia Hung |
| 5 | Measure the performance of the old servers |  |  |  |  | 7d → 3d |  | resources none → Huynh Nhat Loong |
| 6 | Meeting with Head of Library to report the old system | 2022-10-03 → 2022-09-30 (-3d) | 2022-10-03 → 2022-10-05 (+2d) | 1d → 3.5d |  | 6d → 2.5d |  | constraint none → start no earlier than 2022-09-28; resources none → Nguyen Nhat Anh |
| 7 | **Come up with possible solutions (listing out requirements):** | 2022-10-04 → 2022-10-06 (+2d) | 2022-10-12 → 2022-10-19 (+7d) | 7d → 10.5d |  | 4d → 0d | 1 → 6 |  |
| 8 | Scale up the system (storage for physical books, …) | 2022-10-04 → 2022-10-06 (+2d) | 2022-10-07 → 2022-10-15 (+8d) | 4d → 8d |  | 6d → 2d |  | resources none → Luu Trinh Lam |
| 9 | **Come up with new functionalities to benefit the actors:** |  | 2022-10-11 → 2022-10-18 (+7d) | 1.5d → 8d |  | 4.5d → 0d |  |  |
| 10 | E-books (rental and trial mode) |  |  | 1.5d → 2d |  | 4.5d → 6d |  | resources none → Huynh Nhat Loong |
| 11 | Auto generating reports |  |  | 1.5d → 2d |  | 4.5d → 6d |  | resources none → Nguyen Nhat Anh |
| 12 | Auto tracking progress | 2022-10-10 → 2022-10-17 (+7d) | 2022-10-11 → 2022-10-18 (+7d) | 1.5d → 2d |  | 4.5d → 0d |  | resources none → Luu Trinh Lam |
| 13 | Meeting: Suggest new features to Client | 2022-10-12 → 2022-10-19 (+7d) | 2022-10-12 → 2022-10-19 (+7d) | 1d → 0.5d |  | 4d → 0d | 8, 9 → 8, 10, 11, 12 | constraint start no earlier than 2022-10-12 → start no earlier than 2022-10-14; resources none → Ta Gia Hung |
| 14 | **Design the system:** | 2022-10-13 → 2022-10-19 (+6d) | 2022-10-21 → 2022-10-31 (+10d) | 8d → 8.5d |  | 3d → -1.5d | 7 → 13 |  |
| 15 | **Design diagrams:** | 2022-10-13 → 2022-10-19 (+6d) | 2022-10-14 → 2022-10-21 (+7d) | 2d → 2.5d |  | 3d → 0d |  |  |
| 16 | Use-case diagram | 2022-10-13 → 2022-10-19 (+6d) | 2022-10-13 → 2022-10-20 (+7d) |  |  | 4d → 0d |  | constraint none → start no earlier than 2022-10-17; resources none → Luu Trinh Lam |
| 17 | Low-level sequence diagram | 2022-10-13 → 2022-10-19 (+6d) | 2022-10-13 → 2022-10-20 (+7d) |  |  | 4d → 0d |  | resources none → Nguyen Nhat Anh |
| 18 | High-level sequence diagram | 2022-10-13 → 2022-10-19 (+6d) | 2022-10-13 → 2022-10-20 (+7d) |  |  | 4d → 0d |  | resources none → Ta Gia Hung |
| 19 | Class diagram | 2022-10-14 → 2022-10-19 (+5d) | 2022-10-14 → 2022-10-20 (+6d) |  |  | 3d → 1d |  | constraint start no earlier than 2022-10-14 → start no earlier than 2022-10-13; resources none → Huynh Nhat Loong |
| 20 | Deployment diagram | 2022-10-14 → 2022-10-19 (+5d) | 2022-10-14 → 2022-10-21 (+7d) | 1d → 2d |  | 3d → 0.5d |  | constraint start no earlier than 2022-10-14 → start no earlier than 2022-10-12; resources none → Luu Trinh Lam |
| 21 | **Design user interface/ user experience** | 2022-10-15 → 2022-10-20 (+5d) | 2022-10-21 → 2022-10-28 (+7d) |  |  | 3d → 0d | 15 → 16, 17, 18 |  |
| 22 | Try to extend the old interface’s structure by adding more pages (i.e: ebook rental page for readers, progress-tracking page for Head of Library, …) | 2022-10-15 → 2022-10-20 (+5d) | 2022-10-17 → 2022-10-24 (+7d) |  |  | 3d → 0d |  | resources none → Huynh Nhat Loong |
| 23 | If unable to do so, come up with a new wireframe | 2022-10-18 → 2022-10-24 (+6d) | 2022-10-20 → 2022-10-27 (+7d) |  |  | 3d → 0d |  | resources none → Luu Trinh Lam |
| 24 | Meeting: Update the mockup to Client. | 2022-10-21 → 2022-10-27 (+6d) | 2022-10-21 → 2022-10-28 (+7d) |  |  | 3d → 0d |  | resources none → Nguyen Nhat Anh |
| 25 | **Design the server:** | 2022-10-15 → 2022-10-24 (+9d) | 2022-10-19 → 2022-10-31 (+12d) | 4d → 6d |  | 5d → -1.5d | 15 → 16, 19 |  |
| 26 | Extend the old storage | 2022-10-15 → 2022-10-24 (+9d) | 2022-10-17 → 2022-10-24 (+7d) | 1.5d → 0.5d |  | 5d → -0.5d |  | resources none → Luu Trinh Lam |
| 27 | Design new databases for library’s Ebook system | 2022-10-17 → 2022-10-27 (+10d) | 2022-10-19 → 2022-10-31 (+12d) |  |  | 5d → -1.5d |  | resources none → Luu Trinh Lam |
| 28 | **Design the infrastructure:** | 2022-10-15 → 2022-10-24 (+9d) | 2022-10-21 → 2022-10-27 (+6d) | 6d → 4d |  | 3d → 0.5d | 15 → 19, 20 |  |
| 29 | Renew the old one (faster network, better PCs, …) | 2022-10-15 → 2022-10-24 (+9d) | 2022-10-18 → 2022-10-24 (+6d) | 3d → 1d |  | 3d → 0.5d |  | constraint none → start no earlier than 2022-10-19; resources none → Nguyen Nhat Anh |
| 30 | Decide which components of the system to move into cloud system for scalability and better load handling | 2022-10-19 → 2022-10-25 (+6d) | 2022-10-20 → 2022-10-26 (+6d) |  |  | 3d → 0.5d |  | constraint none → start no earlier than 2022-10-17; resources none → Ta Gia Hung |
| 31 | Meeting: Suggest improvements for infrastructure to Client. | 2022-10-21 → 2022-10-27 (+6d) | 2022-10-21 → 2022-10-27 (+6d) |  |  | 3d → 0.5d |  | resources none → Huynh Nhat Loong |
| 32 | **Implementation:** | 2022-10-24 → 2022-11-01 A (+8d) | 2022-11-14 → 2022-11-21 (+7d) | 16d → 14.5d | 0% → 7% | 0d → -1.5d | 14 → 24, 27, 31 |  |
| 33 | **Front-end:** | 2022-10-24 → 2022-11-01 (+8d) | 2022-11-14 → 2022-11-21 (+7d) | 16d → 14.5d |  | 0d → -1.5d |  |  |
| 34 | **Implement UI:** | 2022-10-24 → 2022-11-01 (+8d) | 2022-10-27 → 2022-11-04 (+8d) |  |  | 3d → -1.5d |  |  |
| 35 | **E-book** | 2022-10-24 → 2022-11-01 (+8d) | 2022-10-25 → 2022-11-02 (+8d) |  |  | 5d → -1.5d |  |  |
| 36 | E-book list page | 2022-10-24 → 2022-11-01 (+8d) | 2022-10-25 → 2022-11-02 (+8d) |  |  | 5d → -1.5d |  | constraint none → start no earlier than 2022-10-24; resources none → Huynh Nhat Loong |
| 37 | E-book detail page | 2022-10-24 → 2022-11-01 (+8d) | 2022-10-25 → 2022-11-02 (+8d) |  |  | 5d → -1.5d |  | resources none → Luu Trinh Lam |
| 38 | Reading ebook UI | 2022-10-24 → 2022-11-01 (+8d) | 2022-10-25 → 2022-11-02 (+8d) |  |  | 5d → -1.5d |  | resources none → Ta Gia Hung |
| 39 | Request / Approve e-book rental dialog | 2022-10-24 → 2022-11-01 (+8d) | 2022-10-25 → 2022-11-02 (+8d) |  |  | 5d → -1.5d |  | resources none → Nguyen Nhat Anh |
| 40 | **Management system** | 2022-10-26 → 2022-11-03 (+8d) | 2022-10-27 → 2022-11-04 (+8d) |  |  | 3d → -1.5d |  |  |
| 41 | Auto-generated Report page | 2022-10-26 → 2022-11-03 (+8d) | 2022-10-27 → 2022-11-04 (+8d) |  |  | 3d → -1.5d | none → 36, 37, 38, 39 | resources none → Ta Gia Hung |
| 42 | Work progress insights | 2022-10-26 → 2022-11-03 (+8d) | 2022-10-27 → 2022-11-04 (+8d) |  |  | 3d → -1.5d |  | resources none → Nguyen Nhat Anh |
| 43 | Routing URL | 2022-10-28 → 2022-11-07 (+10d) | 2022-11-01 → 2022-11-14 (+13d) | 3d → 6d |  | 3d → -1.5d | 34 → 36, 37, 38, 39, 41, 42 | constraint none → start no earlier than 2022-10-27; resources none → Luu Trinh Lam |
| 44 | Integrate APIs from Back-end | 2022-11-07 → 2022-11-15 (+8d) | 2022-11-11 → 2022-11-18 (+7d) | 5d → 3.5d |  | 0d → -1.5d |  | constraint none → start no earlier than 2022-11-01; resources none → Huynh Nhat Loong |
| 45 | **Testing** | 2022-11-14 → 2022-11-18 (+4d) | 2022-11-14 → 2022-11-21 (+7d) |  |  | 0d → -1.5d | 34, 43, 44 → 43, 44 |  |
| 46 | Snapshot test | 2022-11-14 → 2022-11-18 (+4d) | 2022-11-14 → 2022-11-21 (+7d) |  |  | 0d → -1.5d |  | resources none → Luu Trinh Lam |
| 47 | Unit test | 2022-11-14 → 2022-11-18 (+4d) | 2022-11-14 → 2022-11-21 (+7d) |  |  | 0d → -1.5d |  | resources none → Huynh Nhat Loong |
| 48 | End to end test | 2022-11-14 → 2022-11-18 (+4d) | 2022-11-14 → 2022-11-21 (+7d) |  |  | 0d → -1.5d |  | resources none → Ta Gia Hung |
| 49 | Overall Coverage and test report: meeting with QA | 2022-11-14 → 2022-11-18 (+4d) | 2022-11-14 → 2022-11-21 (+7d) |  |  | 0d → -1.5d |  | resources none → Nguyen Nhat Anh |
| 50 | **Back-end:** | 2022-10-24 → 2022-11-03 A (+10d) | 2022-11-08 → 2022-11-16 (+8d) | 12d → 10d | 0% → 17% | 3d → 1d |  |  |
| 51 | **Create new databases** | 2022-10-24 → 2022-11-03 (+10d) | 2022-10-25 → 2022-11-04 (+10d) |  |  | 3d → -3.5d |  |  |
| 52 | A bigger database compared to the old one for migrating old data | 2022-10-24 → 2022-11-03 (+10d) | 2022-10-25 → 2022-11-04 (+10d) |  |  | 3d → -3.5d |  | constraint none → start no earlier than 2022-10-26; resources none → Luu Trinh Lam |
| 53 | A database for ebook management system | 2022-10-24 → 2022-11-03 (+10d) | 2022-10-25 → 2022-11-03 (+9d) | 2d → 0.5d |  | 3d → -2d |  | constraint none → start no earlier than 2022-10-26; resources none → Huynh Nhat Loong |
| 54 | Establish connection with databases (the newly created ones) | 2022-10-26 → 2022-11-08 (+13d) | 2022-10-26 → 2022-11-08 (+13d) | 1d → 0.5d |  | 3d → -3.5d | 51 → 52, 53 | constraint none → start no earlier than 2022-11-01; resources none → Nguyen Nhat Anh |
| 55 | Migrate the old data | 2022-10-27 → 2022-11-08 (+12d) | 2022-10-27 → 2022-11-09 (+13d) |  |  | 3d → -3.5d |  | constraint none → start no earlier than 2022-10-30; resources none → Huynh Nhat Loong |
| 56 | Update the databases’ schemas for new requirements | 2022-10-27 → 2022-11-08 (+12d) | 2022-10-27 → 2022-11-08 (+12d) |  |  | 4d → -2d |  | constraint start no earlier than 2022-10-27 → start no earlier than 2022-10-31; resources none → Ta Gia Hung |
| 57 | Integrate old services | 2022-10-28 → 2022-11-09 (+12d) | 2022-10-28 → 2022-11-10 (+13d) |  |  | 3d → -3.5d |  | resources none → Nguyen Nhat Anh |
| 58 | **Create services/endpoint for front-end:** | 2022-10-31 → 2022-11-07 A (+7d) | 2022-11-04 → 2022-11-14 (+10d) | 5d → 5.5d | 0% → 38% | 0d → -1d |  |  |
| 59 | **E-book:** | 2022-10-31 → 2022-11-10 (+10d) | 2022-11-01 → 2022-11-11 (+10d) | 1.5d → 1d |  | 3.5d → 0d |  |  |
| 60 | List ebooks | 2022-10-31 → 2022-11-10 (+10d) | 2022-11-01 → 2022-11-10 (+9d) | 1.5d → 0.5d |  | 3.5d → 0.5d |  | constraint none → start no earlier than 2022-11-04; resources none → Huynh Nhat Loong |
| 61 | View ebook detail | 2022-10-31 → 2022-11-10 (+10d) | 2022-11-01 → 2022-11-11 (+10d) | 1.5d → 1d |  | 3.5d → 0d |  | resources none → Ta Gia Hung |
| 62 | Read ebook in trial mode | 2022-10-31 → 2022-11-10 (+10d) | 2022-11-01 → 2022-11-11 (+10d) | 1.5d → 1d |  | 3.5d → 0d |  | resources none → Nguyen Nhat Anh |
| 63 | Request ebook rental | 2022-10-31 → 2022-11-11 (+11d) | 2022-11-01 → 2022-11-11 (+10d) | 1.5d → 0.5d |  | 3.5d → 0d |  | constraint none → start no earlier than 2022-11-11; resources none → Huynh Nhat Loong |
| 64 | Approve ebook rental requests | 2022-10-31 → 2022-11-10 (+10d) | 2022-11-01 → 2022-11-11 (+10d) | 1.5d → 1d |  | 3.5d → 0d |  | constraint none → start no earlier than 2022-11-03; resources none → Ta Gia Hung |
| 65 | **Management system:** | 2022-11-02 → 2022-11-07 A (+5d) | 2022-11-03 → 2022-11-14 (+11d) | 2d → 5.5d | 0% → 50% | 1d → -1d |  |  |
| 66 | List auto-generated reports | 2022-11-02 → 2022-11-07 A (+5d) | 2022-11-03 → 2022-11-07 A (+4d) | 2d → 1d | 0% → 100% | 1d → none |  | constraint start no earlier than 2022-11-02 → start no earlier than 2022-11-04; resources none → Huynh Nhat Loong |
| 67 | View employees’ work progress | 2022-11-02 → 2022-11-11 (+9d) | 2022-11-03 → 2022-11-14 (+11d) | 2d → 1d |  | 1d → -1d |  | constraint start no earlier than 2022-11-02 → start no earlier than 2022-11-03; resources none → Nguyen Nhat Anh |
| 68 | **Storage:** | 2022-11-04 → 2022-11-07 A (+3d) | 2022-11-04 → 2022-11-07 A (+3d) |  | 0% → 100% | 0d → none |  |  |
| 69 | Request stocking more books | 2022-11-04 → 2022-11-07 A (+3d) | 2022-11-04 → 2022-11-07 A (+3d) |  | 0% → 100% | 0d → none |  | resources none → Nguyen Nhat Anh |
| 70 | Track book delivery progress | 2022-11-04 → 2022-11-07 A (+3d) | 2022-11-04 → 2022-11-07 A (+3d) |  | 0% → 100% | 0d → none |  | resources none → Ta Gia Hung |

| ID | Task | Start | Finish | Duration | Complete | Total float | Predecessors | Other |
| --- | --- | --- | --- | --- | --- | --- | --- | --- |
| 71 | **Test** | 2022-10-31 → 2022-11-14 (+14d) | 2022-11-08 → 2022-11-16 (+8d) | 7d → 2.5d |  | 4d → 1d |  |  |
| 72 | Unit test - Structural test | 2022-11-07 → 2022-11-15 (+8d) | 2022-11-07 → 2022-11-15 (+8d) |  |  | 4d → 1d |  | resources none → Luu Trinh Lam |
| 73 | End-point test - Functional test | 2022-11-07 → 2022-11-14 (+7d) | 2022-11-07 → 2022-11-15 (+8d) |  |  | 4d → 1.5d |  | resources none → Ta Gia Hung |
| 74 | Database Server validation | 2022-10-31 → 2022-11-14 (+14d) | 2022-10-31 → 2022-11-15 (+15d) |  |  | 9d → 1.5d |  | constraint none → start no earlier than 2022-11-07; resources none → Nguyen Nhat Anh |
| 75 | Overall Coverage and test report: meeting with QA | 2022-11-08 → 2022-11-16 (+8d) | 2022-11-08 → 2022-11-16 (+8d) |  |  | 4d → 1d |  | constraint none → start no earlier than 2022-11-08; resources none → Luu Trinh Lam |
| 76 | **Deployment:** | 2022-11-15 → 2022-11-21 (+6d) | 2022-11-18 → 2022-11-24 (+6d) | 4d → 3d |  | 0d → -1.5d |  |  |
| 77 | Packaging all the code | 2022-11-15 → 2022-11-21 (+6d) | 2022-11-17 → 2022-11-21 (+4d) | 3d → 0.5d |  |  |  | constraint none → start no earlier than 2022-11-21; resources none → Luu Trinh Lam |
| 78 | Setting up hosting service | 2022-11-15 → 2022-11-21 (+6d) | 2022-11-15 → 2022-11-23 (+8d) | 1d → 2d |  | 2d → -1.5d |  | constraint none → start no earlier than 2022-11-21; resources none → Ta Gia Hung |
| 79 | Test the connection to the web | 2022-11-16 → 2022-11-21 (+5d) | 2022-11-17 → 2022-11-21 (+4d) | 2d → 0.5d |  |  |  | constraint start no earlier than 2022-11-16 → start no earlier than 2022-11-14; resources none → Nguyen Nhat Anh |
| 80 | Test stability and speed of the web | 2022-11-16 → 2022-11-21 (+5d) | 2022-11-17 → 2022-11-22 (+5d) | 2d → 1.5d |  | 0d → -1d |  | constraint start no earlier than 2022-11-16 → start no earlier than 2022-11-13; resources none → Huynh Nhat Loong |
| 81 | Meeting with Client to gain feedback for successful release | 2022-11-18 → 2022-11-23 (+5d) | 2022-11-18 → 2022-11-24 (+6d) |  |  | 0d → -1.5d |  | constraint none → start no earlier than 2022-11-15; resources none → Luu Trinh Lam |
| 82 | **Hand over the system to Client (Head of Library)** | 2022-11-21 → 2022-11-23 A (+2d) | 2022-11-25 → 2022-11-30 (+5d) | 5d → 5.5d | 0% → 9% |  | 76 → 81 |  |
| 83 | **Prepare user manual docs** | 2022-11-21 → 2022-11-24 (+3d) | 2022-11-21 → 2022-11-28 (+7d) | 1d → 2d |  |  |  |  |
| 84 | IT department | 2022-11-21 → 2022-11-24 (+3d) | 2022-11-21 → 2022-11-28 (+7d) | 1d → 1.5d |  |  |  | resources none → Luu Trinh Lam |
| 85 | Librarian | 2022-11-21 → 2022-11-24 (+3d) | 2022-11-21 → 2022-11-24 (+3d) | 1d → 0.5d |  | 0d → 1.5d |  | resources none → Ta Gia Hung |
| 86 | Head of Library | 2022-11-21 → 2022-11-24 (+3d) | 2022-11-21 → 2022-11-24 (+3d) | 1d → 0.5d |  | 0d → 1.5d |  | resources none → Nguyen Nhat Anh |
| 87 | **Demo and showing reports of the system** | 2022-11-22 → 2022-11-28 (+6d) | 2022-11-24 → 2022-11-30 (+6d) | 3d → 2d |  |  | 83 → 84, 85, 86 |  |
| 88 | Organize knowledge sharing sessions for staffs (IT, Librarian, Head of Library, HR) | 2022-11-22 → 2022-11-28 (+6d) | 2022-11-22 → 2022-11-28 (+6d) | 1d → 0.5d |  |  |  | constraint none → start no earlier than 2022-11-21; resources none → Huynh Nhat Loong |
| 89 | Transfer codebase ownership | 2022-11-23 → 2022-11-29 (+6d) | 2022-11-23 → 2022-11-29 (+6d) |  |  |  |  | constraint none → start no earlier than 2022-11-21; resources none → Luu Trinh Lam |
| 90 | Meeting with Head of Library to announce the final system | 2022-11-24 → 2022-11-30 (+6d) | 2022-11-24 → 2022-11-30 (+6d) | 1d → 0.5d |  |  |  | constraint none → start no earlier than 2022-11-24; resources none → Nguyen Nhat Anh |
| 91 | **Prepare maintenance plan** | 2022-11-21 → 2022-11-23 A (+2d) |  | 5d → 2.5d | 0% → 50% |  |  |  |
| 92 | **System checkup every 3 months** | 2022-11-25 A | 2022-11-25 A | 1d → 0.5d | 0% → 100% | 0d → none |  |  |
| 93 | System checkup every 3 months 1 | 2022-11-25 A | 2022-11-25 A | 1d → 0.5d | 0% → 100% |  | 87 → 90 | constraint start no earlier than 2022-10-01 → start no earlier than 2022-11-29; resources none → Luu Trinh Lam |
| 94 | Planning for recurring training about security for the library system | 2022-11-21 → 2022-11-23 (+2d) | 2022-11-21 → 2022-11-23 (+2d) | 1d → 0.5d |  |  |  | resources none → Huynh Nhat Loong |

## Version 3 (data date 2022-11-25, saved 2022-11-26, file Software Project Management - Library Lab 4 (1).mpp)

Note of the change: Add project's document

Last finish 2022-11-30 → 2022-12-05 (+5d). Complete tasks 4 → 57.

Changed:

| ID | Task | Start | Finish | Duration | Complete | Total float | Other |
| --- | --- | --- | --- | --- | --- | --- | --- |
| 1 | **Diagnose the old system:** | 2022-09-28 A | 2022-10-05 → 2022-10-06 A (+1d) | 6d → 6.62d | 0% → 100% | 0d → none | baseline start none → 2022-09-28; baseline finish none → 2022-10-06 |
| 2 | Perform surveying on regular readers at the library | 2022-09-28 A | 2022-09-30 A |  | 0% → 100% | 2.38d → none | baseline start none → 2022-09-28; baseline finish none → 2022-09-30 |
| 3 | Analyze surveys and look into the problem | 2022-09-28 → 2022-10-03 A (+5d) | 2022-09-28 → 2022-10-03 A (+5d) |  | 0% → 100% |  | baseline start none → 2022-10-03; baseline finish none → 2022-10-03 |
| 4 | Investigate employees (librarian, IT specialist, head of library) | 2022-09-28 A | 2022-09-29 A |  | 0% → 100% | 3d → none | baseline start none → 2022-09-28; baseline finish none → 2022-09-29 |
| 5 | Measure the performance of the old servers | 2022-09-28 A | 2022-09-29 A |  | 0% → 100% | 3d → none | baseline start none → 2022-09-28; baseline finish none → 2022-09-29 |
| 6 | Meeting with Head of Library to report the old system | 2022-09-30 → 2022-10-03 A (+3d) | 2022-10-05 → 2022-10-06 A (+1d) |  | 0% → 100% | 2.5d → none | baseline start none → 2022-10-03; baseline finish none → 2022-10-06 |
| 7 | **Come up with possible solutions (listing out requirements):** | 2022-10-06 A | 2022-10-19 A | 10.5d → 9.88d | 0% → 100% | 0d → none | baseline start none → 2022-10-06; baseline finish none → 2022-10-19 |
| 8 | Scale up the system (storage for physical books, …) | 2022-10-06 A | 2022-10-15 A | 8d → 6.88d | 0% → 100% | 2d → none | baseline start none → 2022-10-06; baseline finish none → 2022-10-15 |
| 9 | **Come up with new functionalities to benefit the actors:** | 2022-10-10 A | 2022-10-18 A |  | 0% → 100% | 0d → none | baseline start none → 2022-10-10; baseline finish none → 2022-10-18 |
| 10 | E-books (rental and trial mode) | 2022-10-10 A | 2022-10-11 A |  | 0% → 100% | 6d → none | baseline start none → 2022-10-10; baseline finish none → 2022-10-11 |
| 11 | Auto generating reports | 2022-10-10 A | 2022-10-11 A |  | 0% → 100% | 6d → none | baseline start none → 2022-10-10; baseline finish none → 2022-10-11 |
| 12 | Auto tracking progress | 2022-10-17 A | 2022-10-18 A |  | 0% → 100% | 0d → none | baseline start none → 2022-10-17; baseline finish none → 2022-10-18 |
| 13 | Meeting: Suggest new features to Client | 2022-10-19 A | 2022-10-19 A |  | 0% → 100% | 0d → none | baseline start none → 2022-10-19; baseline finish none → 2022-10-19 |
| 14 | **Design the system:** | 2022-10-19 A | 2022-10-31 → 2022-11-01 A (+1d) | 8.5d → 9d | 0% → 100% | -1.5d → none | baseline start none → 2022-10-19; baseline finish none → 2022-10-31 |
| 15 | **Design diagrams:** | 2022-10-19 A | 2022-10-21 A |  | 0% → 100% | 0d → none | baseline start none → 2022-10-19; baseline finish none → 2022-10-21 |
| 16 | Use-case diagram | 2022-10-19 A | 2022-10-20 A |  | 0% → 100% | 0d → none | baseline start none → 2022-10-19; baseline finish none → 2022-10-20 |
| 17 | Low-level sequence diagram | 2022-10-19 A | 2022-10-20 A |  | 0% → 100% | 0d → none | baseline start none → 2022-10-19; baseline finish none → 2022-10-20 |
| 18 | High-level sequence diagram | 2022-10-19 A | 2022-10-20 A |  | 0% → 100% | 0d → none | baseline start none → 2022-10-19; baseline finish none → 2022-10-20 |
| 19 | Class diagram | 2022-10-19 A | 2022-10-20 A |  | 0% → 100% | 1d → none | baseline start none → 2022-10-19; baseline finish none → 2022-10-20 |
| 20 | Deployment diagram | 2022-10-19 A | 2022-10-21 A |  | 0% → 100% | 0.5d → none | baseline start none → 2022-10-19; baseline finish none → 2022-10-21 |
| 21 | **Design user interface/ user experience** | 2022-10-20 A | 2022-10-28 A | 6d → 6.5d | 0% → 100% | 0d → none | baseline start none → 2022-10-20; baseline finish none → 2022-10-28 |
| 22 | Try to extend the old interface’s structure by adding more pages (i.e: ebook rental page for readers, progress-tracking page for Head of Library, …) | 2022-10-20 A | 2022-10-24 A |  | 0% → 100% | 0d → none | baseline start none → 2022-10-20; baseline finish none → 2022-10-24 |
| 23 | If unable to do so, come up with a new wireframe | 2022-10-24 → 2022-10-25 A (+1d) | 2022-10-27 A |  | 0% → 100% | 0d → none | constraint none → start no earlier than 2022-10-25; baseline start none → 2022-10-24; baseline finish none → 2022-10-27 |
| 24 | Meeting: Update the mockup to Client. | 2022-10-27 → 2022-10-28 A (+1d) | 2022-10-28 A |  | 0% → 100% | 0d → none | baseline start none → 2022-10-27; baseline finish none → 2022-10-28 |
| 25 | **Design the server:** | 2022-10-24 A | 2022-10-31 → 2022-11-01 A (+1d) | 6d → 6.5d | 0% → 100% | -1.5d → none | baseline start none → 2022-10-24; baseline finish none → 2022-10-31 |
| 26 | Extend the old storage | 2022-10-24 A | 2022-10-24 A | 0.5d → 1d | 0% → 100% | -0.5d → none | baseline start none → 2022-10-24; baseline finish none → 2022-10-24 |
| 27 | Design new databases for library’s Ebook system | 2022-10-27 → 2022-10-28 A (+1d) | 2022-10-31 → 2022-11-01 A (+1d) |  | 0% → 100% | -1.5d → none | baseline start none → 2022-10-27; baseline finish none → 2022-10-31 |
| 28 | **Design the infrastructure:** | 2022-10-24 A | 2022-10-27 A |  | 0% → 100% | 0.5d → none | baseline start none → 2022-10-24; baseline finish none → 2022-10-27 |
| 29 | Renew the old one (faster network, better PCs, …) | 2022-10-24 A | 2022-10-24 A |  | 0% → 100% | 0.5d → none | baseline start none → 2022-10-24; baseline finish none → 2022-10-24 |
| 30 | Decide which components of the system to move into cloud system for scalability and better load handling | 2022-10-25 A | 2022-10-26 A |  | 0% → 100% | 0.5d → none | baseline start none → 2022-10-25; baseline finish none → 2022-10-26 |
| 31 | Meeting: Suggest improvements for infrastructure to Client. | 2022-10-27 A | 2022-10-27 A |  | 0% → 100% | 0.5d → none | baseline start none → 2022-10-27; baseline finish none → 2022-10-27 |
| 32 | **Implementation:** |  | 2022-11-21 → 2022-11-24 A (+3d) | 14.5d → 17.5d | 7% → 100% | -1.5d → none | baseline start none → 2022-11-01; baseline finish none → 2022-11-21 |
| 33 | **Front-end:** | 2022-11-01 A | 2022-11-21 → 2022-11-24 A (+3d) | 14.5d → 17.5d | 0% → 100% | -1.5d → none | baseline start none → 2022-11-01; baseline finish none → 2022-11-21 |
| 34 | **Implement UI:** | 2022-11-01 A | 2022-11-04 → 2022-11-08 A (+4d) | 4d → 5d | 0% → 100% | -1.5d → none | baseline start none → 2022-11-01; baseline finish none → 2022-11-04 |
| 35 | **E-book** | 2022-11-01 A | 2022-11-02 → 2022-11-03 A (+1d) |  | 0% → 100% | -1.5d → none | baseline start none → 2022-11-01; baseline finish none → 2022-11-02 |
| 36 | E-book list page | 2022-11-01 A | 2022-11-02 → 2022-11-03 A (+1d) |  | 0% → 100% | -1.5d → none | baseline start none → 2022-11-01; baseline finish none → 2022-11-02 |
| 37 | E-book detail page | 2022-11-01 A | 2022-11-02 → 2022-11-03 A (+1d) |  | 0% → 100% | -1.5d → none | baseline start none → 2022-11-01; baseline finish none → 2022-11-02 |
| 38 | Reading ebook UI | 2022-11-01 A | 2022-11-02 → 2022-11-03 A (+1d) |  | 0% → 100% | -1.5d → none | baseline start none → 2022-11-01; baseline finish none → 2022-11-02 |
| 39 | Request / Approve e-book rental dialog | 2022-11-01 A | 2022-11-02 → 2022-11-03 A (+1d) |  | 0% → 100% | -1.5d → none | baseline start none → 2022-11-01; baseline finish none → 2022-11-02 |
| 40 | **Management system** | 2022-11-03 → 2022-11-01 A (-2d) | 2022-11-04 → 2022-11-08 A (+4d) | 2d → 5d | 0% → 100% | -1.5d → none | baseline start none → 2022-11-03; baseline finish none → 2022-11-04 |
| 41 | Auto-generated Report page | 2022-11-03 A | 2022-11-04 → 2022-11-08 A (+4d) |  | 0% → 100% | -1.5d → none | baseline start none → 2022-11-03; baseline finish none → 2022-11-04 |
| 42 | Work progress insights | 2022-11-03 → 2022-11-01 A (-2d) | 2022-11-04 A |  | 0% → 100% | -1.5d → none | baseline start none → 2022-11-03; baseline finish none → 2022-11-04 |
| 43 | Routing URL | 2022-11-07 → 2022-11-08 A (+1d) | 2022-11-14 → 2022-11-18 A (+4d) |  | 0% → 100% | -1.5d → none | baseline start none → 2022-11-07; baseline finish none → 2022-11-14 |
| 44 | Integrate APIs from Back-end | 2022-11-15 → 2022-11-18 A (+3d) | 2022-11-18 → 2022-11-23 A (+5d) |  | 0% → 100% | -1.5d → none | baseline start none → 2022-11-15; baseline finish none → 2022-11-18 |
| 45 | **Testing** | 2022-11-18 → 2022-11-24 A (+6d) | 2022-11-21 → 2022-11-24 A (+3d) |  | 0% → 100% | -1.5d → none | baseline start none → 2022-11-18; baseline finish none → 2022-11-21 |
| 46 | Snapshot test | 2022-11-18 → 2022-11-24 A (+6d) | 2022-11-21 → 2022-11-24 A (+3d) |  | 0% → 100% | -1.5d → none | baseline start none → 2022-11-18; baseline finish none → 2022-11-21 |
| 47 | Unit test | 2022-11-18 → 2022-11-24 A (+6d) | 2022-11-21 → 2022-11-24 A (+3d) |  | 0% → 100% | -1.5d → none | baseline start none → 2022-11-18; baseline finish none → 2022-11-21 |
| 48 | End to end test | 2022-11-18 → 2022-11-24 A (+6d) | 2022-11-21 → 2022-11-24 A (+3d) |  | 0% → 100% | -1.5d → none | baseline start none → 2022-11-18; baseline finish none → 2022-11-21 |
| 49 | Overall Coverage and test report: meeting with QA | 2022-11-18 → 2022-11-24 A (+6d) | 2022-11-21 → 2022-11-24 A (+3d) |  | 0% → 100% | -1.5d → none | baseline start none → 2022-11-18; baseline finish none → 2022-11-21 |
| 50 | **Back-end:** |  | 2022-11-16 → 2022-11-17 A (+1d) | 10d → 10.5d | 17% → 100% | 1d → none | baseline start none → 2022-11-03; baseline finish none → 2022-11-16 |
| 51 | **Create new databases** | 2022-11-03 A | 2022-11-04 → 2022-11-07 A (+3d) |  | 0% → 100% | -3.5d → none | baseline start none → 2022-11-03; baseline finish none → 2022-11-04 |
| 52 | A bigger database compared to the old one for migrating old data | 2022-11-03 A | 2022-11-04 → 2022-11-07 A (+3d) |  | 0% → 100% | -3.5d → none | baseline start none → 2022-11-03; baseline finish none → 2022-11-04 |
| 53 | A database for ebook management system | 2022-11-03 A | 2022-11-03 A |  | 0% → 100% | -2d → none | baseline start none → 2022-11-03; baseline finish none → 2022-11-03 |
| 54 | Establish connection with databases (the newly created ones) | 2022-11-08 A | 2022-11-08 A |  | 0% → 100% | -3.5d → none | baseline start none → 2022-11-08; baseline finish none → 2022-11-08 |
| 55 | Migrate the old data | 2022-11-08 → 2022-11-09 A (+1d) | 2022-11-09 A |  | 0% → 100% | -3.5d → none | baseline start none → 2022-11-08; baseline finish none → 2022-11-09 |
| 56 | Update the databases’ schemas for new requirements | 2022-11-08 A | 2022-11-08 → 2022-11-09 A (+1d) |  | 0% → 100% | -2d → none | baseline start none → 2022-11-08; baseline finish none → 2022-11-08 |
| 57 | Integrate old services | 2022-11-09 → 2022-11-10 A (+1d) | 2022-11-10 A |  | 0% → 100% | -3.5d → none | baseline start none → 2022-11-09; baseline finish none → 2022-11-10 |
| 58 | **Create services/endpoint for front-end:** |  | 2022-11-14 A | 5.5d → 6d | 38% → 100% | -1d → none | baseline start none → 2022-11-07; baseline finish none → 2022-11-14 |
| 59 | **E-book:** | 2022-11-10 → 2022-11-11 A (+1d) | 2022-11-11 → 2022-11-14 A (+3d) | 1d → 2d | 0% → 100% | 0d → none | baseline start none → 2022-11-10; baseline finish none → 2022-11-11 |
| 60 | List ebooks | 2022-11-10 → 2022-11-11 A (+1d) | 2022-11-10 → 2022-11-11 A (+1d) |  | 0% → 100% | 0.5d → none | baseline start none → 2022-11-10; baseline finish none → 2022-11-10 |
| 61 | View ebook detail | 2022-11-10 → 2022-11-14 A (+4d) | 2022-11-11 → 2022-11-14 A (+3d) |  | 0% → 100% | 0d → none | baseline start none → 2022-11-10; baseline finish none → 2022-11-11 |
| 62 | Read ebook in trial mode | 2022-11-10 → 2022-11-11 A (+1d) | 2022-11-11 A |  | 0% → 100% | 0d → none | baseline start none → 2022-11-10; baseline finish none → 2022-11-11 |
| 63 | Request ebook rental | 2022-11-11 A | 2022-11-11 A |  | 0% → 100% | 0d → none | baseline start none → 2022-11-11; baseline finish none → 2022-11-11 |
| 64 | Approve ebook rental requests | 2022-11-10 → 2022-11-11 A (+1d) | 2022-11-11 A |  | 0% → 100% | 0d → none | baseline start none → 2022-11-10; baseline finish none → 2022-11-11 |
| 65 | **Management system:** |  | 2022-11-14 A | 5.5d → 6d | 50% → 100% | -1d → none | baseline start none → 2022-11-07; baseline finish none → 2022-11-14 |
| 66 | List auto-generated reports |  |  |  |  |  | baseline start none → 2022-11-07; baseline finish none → 2022-11-07 |
| 67 | View employees’ work progress | 2022-11-11 → 2022-11-14 A (+3d) | 2022-11-14 A |  | 0% → 100% | -1d → none | baseline start none → 2022-11-11; baseline finish none → 2022-11-14 |
| 68 | **Storage:** |  |  |  |  |  | baseline start none → 2022-11-07; baseline finish none → 2022-11-07 |
| 69 | Request stocking more books |  |  |  |  |  | baseline start none → 2022-11-07; baseline finish none → 2022-11-07 |
| 70 | Track book delivery progress |  |  |  |  |  | baseline start none → 2022-11-07; baseline finish none → 2022-11-07 |

| ID | Task | Start | Finish | Duration | Complete | Total float | Other |
| --- | --- | --- | --- | --- | --- | --- | --- |
| 71 | **Test** | 2022-11-14 → 2022-11-15 A (+1d) | 2022-11-16 → 2022-11-17 A (+1d) | 2.5d → 3d | 0% → 100% | 1d → none | baseline start none → 2022-11-14; baseline finish none → 2022-11-16 |
| 72 | Unit test - Structural test | 2022-11-15 → 2022-11-16 A (+1d) | 2022-11-15 → 2022-11-16 A (+1d) |  | 0% → 100% | 1d → none | baseline start none → 2022-11-15; baseline finish none → 2022-11-15 |
| 73 | End-point test - Functional test | 2022-11-14 → 2022-11-15 A (+1d) | 2022-11-15 A |  | 0% → 100% | 1.5d → none | baseline start none → 2022-11-14; baseline finish none → 2022-11-15 |
| 74 | Database Server validation | 2022-11-14 → 2022-11-15 A (+1d) | 2022-11-15 A |  | 0% → 100% | 1.5d → none | baseline start none → 2022-11-14; baseline finish none → 2022-11-15 |
| 75 | Overall Coverage and test report: meeting with QA | 2022-11-16 → 2022-11-17 A (+1d) | 2022-11-16 → 2022-11-17 A (+1d) |  | 0% → 100% | 1d → none | baseline start none → 2022-11-16; baseline finish none → 2022-11-16 |
| 76 | **Deployment:** | 2022-11-21 → 2022-11-25 A (+4d) | 2022-11-24 → 2022-11-29 (+5d) |  | 0% → 55% | -1.5d → -1d | baseline start none → 2022-11-21; baseline finish none → 2022-11-24 |
| 77 | Packaging all the code | 2022-11-21 → 2022-11-25 A (+4d) | 2022-11-21 → 2022-11-25 A (+4d) |  | 0% → 100% | 0d → none | baseline start none → 2022-11-21; baseline finish none → 2022-11-21 |
| 78 | Setting up hosting service | 2022-11-21 → 2022-11-25 A (+4d) | 2022-11-23 → 2022-11-28 (+5d) |  | 0% → 50% | -1.5d → -3d | baseline start none → 2022-11-21; baseline finish none → 2022-11-23 |
| 79 | Test the connection to the web | 2022-11-21 → 2022-11-25 A (+4d) | 2022-11-21 → 2022-11-25 A (+4d) |  | 0% → 100% | 0d → none | baseline start none → 2022-11-21; baseline finish none → 2022-11-21 |
| 80 | Test stability and speed of the web | 2022-11-21 → 2022-11-25 A (+4d) | 2022-11-22 → 2022-11-28 (+6d) |  | 0% → 67% | -1d → -2.5d | baseline start none → 2022-11-21; baseline finish none → 2022-11-22 |
| 81 | Meeting with Client to gain feedback for successful release | 2022-11-23 → 2022-11-29 (+6d) | 2022-11-24 → 2022-11-29 (+5d) |  |  | -1.5d → -3d | baseline start none → 2022-11-23; baseline finish none → 2022-11-24 |
| 82 | **Hand over the system to Client (Head of Library)** | 2022-11-23 A → 2022-11-25 A (+2d) | 2022-11-30 → 2022-12-05 (+5d) | 5.5d → 7d |  |  | baseline start none → 2022-11-23; baseline finish none → 2022-11-30 |
| 83 | **Prepare user manual docs** | 2022-11-24 → 2022-11-30 (+6d) | 2022-11-28 → 2022-12-01 (+3d) |  |  |  | baseline start none → 2022-11-24; baseline finish none → 2022-11-28 |
| 84 | IT department | 2022-11-24 → 2022-11-30 (+6d) | 2022-11-28 → 2022-12-01 (+3d) |  |  |  | baseline start none → 2022-11-24; baseline finish none → 2022-11-28 |
| 85 | Librarian | 2022-11-24 → 2022-11-30 (+6d) | 2022-11-24 → 2022-11-30 (+6d) |  |  |  | baseline start none → 2022-11-24; baseline finish none → 2022-11-24 |
| 86 | Head of Library | 2022-11-24 → 2022-11-30 (+6d) | 2022-11-24 → 2022-11-30 (+6d) |  |  |  | baseline start none → 2022-11-24; baseline finish none → 2022-11-24 |
| 87 | **Demo and showing reports of the system** | 2022-11-28 → 2022-12-02 (+4d) | 2022-11-30 → 2022-12-05 (+5d) |  |  |  | baseline start none → 2022-11-28; baseline finish none → 2022-11-30 |
| 88 | Organize knowledge sharing sessions for staffs (IT, Librarian, Head of Library, HR) | 2022-11-28 → 2022-12-02 (+4d) | 2022-11-28 → 2022-12-02 (+4d) |  |  |  | baseline start none → 2022-11-28; baseline finish none → 2022-11-28 |
| 89 | Transfer codebase ownership | 2022-11-29 → 2022-12-02 (+3d) | 2022-11-29 → 2022-12-05 (+6d) |  |  |  | baseline start none → 2022-11-29; baseline finish none → 2022-11-29 |
| 90 | Meeting with Head of Library to announce the final system | 2022-11-30 → 2022-12-05 (+5d) | 2022-11-30 → 2022-12-05 (+5d) |  |  |  | baseline start none → 2022-11-30; baseline finish none → 2022-11-30 |
| 91 | **Prepare maintenance plan** | 2022-11-23 A → 2022-11-25 A (+2d) | 2022-11-25 → 2022-11-28 (+3d) | 2.5d → 2d |  |  | baseline start none → 2022-11-23; baseline finish none → 2022-11-25 |
| 92 | **System checkup every 3 months** |  |  |  |  |  | baseline start none → 2022-11-25; baseline finish none → 2022-11-25 |
| 93 | System checkup every 3 months 1 |  |  |  |  |  | baseline start none → 2022-11-25; baseline finish none → 2022-11-25 |
| 94 | Planning for recurring training about security for the library system | 2022-11-23 → 2022-11-28 (+5d) | 2022-11-23 → 2022-11-28 (+5d) |  |  |  | baseline start none → 2022-11-23; baseline finish none → 2022-11-23 |
